# imcloud公有云第二阶段开发计划

Schedule from MS Project, 2019-07-15 to 2019-12-27, A marks actual dates.

## Calendars

- 标准: Mon-Fri 08:00-12:00, 13:00-17:00; Sat-Sun off. Exceptions (off unless hours are given): 2019-09-13 (中秋节), 2019-09-29 08:00-12:00, 13:00-17:00 (工作日), 2019-10-01 to 2019-10-04 (国庆节), 2019-10-07 (国庆节), 2019-10-12 08:00-12:00, 13:00-17:00 (工作日).

## Resources

| Resource |
| --- |
| 席晔文 |
| 习云芳 |
| 钟波 |
| 李文静 |
| 孙杨寸 |
| 聂军 |
| 李斌 |
| 李浩 |
| 刘星 |
| 顾勇 |
| 邓皓 |
| 周凡 |
| 张璧 |

## Schedule

| ID | WBS | Task | Type | Duration | Start | Finish | Predecessors | Complete | Remaining | Total slack | Resources | Work | Actual work | 输出物 |
| --- | --- | --- | --- | --- | --- | --- | --- | --- | --- | --- | --- | --- | --- | --- |
| 1 | 1 | **需求编写** |  | 45d | 2019-07-15 A | 2019-09-16 A |  | 100% |  |  |  | 128h | 128h |  |
| 2 | 1.1 | 功能模块需求跟踪矩阵 | manual | 5d | 2019-07-15 A | 2019-07-19 A |  | 100% |  |  | 邓皓 | 40h | 40h | 需求跟踪矩阵 |
| 3 | 1.2 | 设备通信接口 | manual | 6d | 2019-07-22 A | 2019-07-29 A | 2 | 100% |  |  | 邓皓 | 48h | 48h | 公有云设备通信接口文档 |
| 4 | 1.3 | Portal认证流程 | manual | 5d | 2019-09-09 A | 2019-09-16 A |  | 100% |  |  | 邓皓 | 40h | 40h | Portal认证需求文档 |
| 5 | 2 | **云端服务** |  | 22d | 2019-09-09 A | 2019-10-14 |  | 23% | 16.88d | 0d |  | 952h | 211.2h |  |
| 6 | 2.1 | **3.设备管理** |  | 16d | 2019-09-09 A | 2019-09-30 |  | 43% | 9.07d |  |  | 240h | 104h |  |
| 7 | 2.1.1 | 3.1设备发现服务端 | manual | 2d | 2019-09-11 A | 2019-09-12 A |  | 100% |  |  | 席晔文 | 16h | 16h |  |
| 8 | 2.1.2 | 3.2设备上线服务端MQTT | manual | 2d | 2019-09-16 A | 2019-09-17 |  | 80% | 0.4d |  | 席晔文 | 16h | 12.8h |  |
| 9 | 2.1.3 | 3.3AP管理前端 | manual | 6d | 2019-09-12 A | 2019-09-20 |  | 60% | 2.4d |  | 习云芳 | 48h | 28.8h |  |
| 10 | 2.1.4 | 3.3AP管理服务端 | manual | 7d | 2019-09-18 | 2019-09-26 | 12 |  |  |  | 钟波 | 56h |  |  |
| 11 | 2.1.5 | 3.4AC管理前端 | manual | 3d | 2019-09-09 A | 2019-09-11 |  | 80% | 0.6d |  | 习云芳 | 24h | 19.2h |  |
| 12 | 2.1.6 | 3.4AC管理服务端 | manual | 4d | 2019-09-11 A | 2019-09-17 |  | 85% | 0.6d |  | 钟波 | 32h | 27.2h |  |
| 13 | 2.1.7 | 3.6DCME管理前端 | manual | 3d | 2019-09-23 | 2019-09-25 | 9 |  |  |  | 习云芳 | 24h |  |  |
| 14 | 2.1.8 | 3.6DCME管理服务端 | manual | 3d | 2019-09-27 | 2019-09-30 | 10 |  |  |  | 钟波 | 24h |  |  |
| 15 | 2.2 | **4.网络配置** |  | 12d | 2019-09-11 A | 2019-09-27 |  | 26% | 8.91d |  |  | 208h | 53.6h |  |
| 16 | 2.2.1 | 4.1无线网络配置前端 | manual | 4d | 2019-09-11 A | 2019-09-17 |  | 80% | 0.8d |  | 李文静 | 32h | 25.6h |  |
| 17 | 2.2.2 | 4.1无线网络配置服务端 | manual | 5d | 2019-09-11 A | 2019-09-18 |  | 70% | 1.5d |  | 孙杨寸 | 40h | 28h |  |
| 18 | 2.2.3 | **4.3认证配置** |  | 9d | 2019-09-17 | 2019-09-27 |  |  |  |  |  | 96h |  |  |
| 19 | 2.2.3.1 | 4.3.1认证策略设置前端 | manual | 5d | 2019-09-18 | 2019-09-24 | 16 |  |  |  | 李文静 | 40h |  |  |
| 20 | 2.2.3.2 | 4.3.1认证策略设置服务端 | manual | 4d | 2019-09-18 | 2019-09-23 |  |  |  |  | 席晔文 | 32h |  |  |
| 21 | 2.2.3.3 | 4.3.4微信/短信设置前端 | manual | 2d | 2019-09-25 | 2019-09-26 | 19 |  |  |  | 李文静 | 16h |  |  |
| 22 | 2.2.3.4 | 4.3.4微信/短信设置服务端 | manual | 1d | 2019-09-24 | 2019-09-24 |  |  |  |  | 席晔文 | 8h |  |  |
| 23 | 2.2.4 | 4.4Portal认证页面缓存到设备 | manual | 5d | 2019-09-23 | 2019-09-27 |  |  |  |  | 聂军 | 40h |  |  |
| 24 | 2.3 | **5.用户Portal认证** |  | 18d | 2019-09-16 A | 2019-10-14 |  | 6% | 17d | 0d |  | 312h | 24h |  |
| 25 | 2.3.1 | 5.1账号认证5.2海报认证 （扫码认证）5.3短信认证5.4一键认证5.6微信公众号菜单认证5.7微信验证码认证5.9第三方Portal认证前端 | manual | 9d | 2019-09-27 | 2019-10-14 | 21 |  |  |  | 李文静 | 72h |  |  |
| 26 | 2.3.2 | 5.1账号认证服务端 | manual | 3d | 2019-09-16 A | 2019-09-18 |  | 50% | 1.5d |  | 李斌; 顾勇 | 48h | 24h |  |
| 27 | 2.3.3 | 5.2海报认证 （扫码认证）服务端 | manual | 3d | 2019-09-19 | 2019-09-23 |  |  |  |  | 李斌; 顾勇 | 48h |  |  |
| 28 | 2.3.4 | 5.3短信认证服务端 | manual | 3d | 2019-09-24 | 2019-09-26 |  |  |  |  | 李斌; 顾勇 | 48h |  |  |
| 29 | 2.3.5 | 5.4一键认证服务端 | manual | 3d | 2019-09-27 | 2019-09-30 |  |  |  |  | 李斌; 顾勇 | 48h |  |  |
| 30 | 2.3.6 | 5.6微信公众号菜单认证服务端 | manual | 2d | 2019-10-08 | 2019-10-09 |  |  |  |  | 李斌 | 16h |  |  |
| 31 | 2.3.7 | 5.7微信验证码认证服务端 | manual | 2d | 2019-10-10 | 2019-10-11 |  |  |  |  | 李斌 | 16h |  |  |
| 32 | 2.3.8 | 5.9第三方Portal认证服务端 | manual | 2d | 2019-10-12 | 2019-10-14 |  |  |  |  | 李斌 | 16h |  |  |

| ID | WBS | Task | Type | Duration | Start | Finish | Predecessors | Complete | Remaining | Total slack | Constraint | Resources | Work | Actual work |
| --- | --- | --- | --- | --- | --- | --- | --- | --- | --- | --- | --- | --- | --- | --- |
| 33 | 2.4 | **6.状态与监控** |  | 11d | 2019-09-18 | 2019-10-08 |  |  |  |  |  |  | 80h |  |
| 34 | 2.4.1 | 6.1网络设备概况前端 | manual | 3d | 2019-09-26 | 2019-09-29 | 13 |  |  |  |  | 习云芳 | 24h |  |
| 35 | 2.4.2 | 6.1网络设备概况服务端 | manual | 2d | 2019-09-19 | 2019-09-20 | 17 |  |  |  |  | 孙杨寸 | 16h |  |
| 36 | 2.4.3 | 6.3日志管理前端 | manual | 3d | 2019-09-24 | 2019-09-26 |  |  |  |  |  | 孙杨寸 | 24h |  |
| 37 | 2.4.4 | 6.3日志管理服务端 | manual | 2d | 2019-09-30 | 2019-10-08 | 34 |  |  |  |  | 孙杨寸 | 16h |  |
| 38 | 2.5 | 数据上报 下发和Portal框架移植 | manual | 2d | 2019-09-16 A | 2019-09-17 A |  | 100% |  |  |  | 聂军 | 16h | 16h |
| 39 | 2.6 | 数据库设计 | manual | 2d | 2019-09-10 A | 2019-09-11 |  | 85% | 0.3d |  |  | 聂军 | 16h | 13.6h |
| 40 | 2.7 | 数据上报下发 | manual | 10d | 2019-09-25 | 2019-10-12 |  |  |  |  |  | 席晔文 | 80h |  |
| 41 | 3 | **AC** |  | 20d? | 2019-09-09 A | 2019-10-12 |  | 12% | 17.7d? | 0d |  |  | 320h | 36.8h |
| 42 | 3.1 | **二级AC开发** |  | 15d? | 2019-09-09 A | 2019-09-30 |  | 15% | 12.7d? | 0d |  |  | 240h | 36.8h |
| 43 | 3.1.1 | **二级AC注册公有云** |  | 7d? | 2019-09-09 A | 2019-09-19 |  | 66% | 2.4d? | 0d |  | 李浩 | 56h | 36.8h |
| 44 | 3.1.1.1 | 二级AC访问公有云url |  | 3d | 2019-09-09 A | 2019-09-12 A |  | 100% |  |  | start no earlier than 2019-09-09 |  |  |  |
| 45 | 3.1.1.2 | 二级AC接收并提取公有云回复的注册url |  | 2d? | 2019-09-12 A | 2019-09-17 | 44 | 80% | 0.4d? | 0d |  |  |  |  |
| 46 | 3.1.1.3 | 二级AC解析注册url，建立MQTT连接 |  | 2d? | 2019-09-17 | 2019-09-19 | 45 |  |  | 0d |  |  |  |  |
| 47 | 3.1.2 | **二级AC首次配置下发** |  | 8d? | 2019-09-19 | 2019-09-30 | 43 |  |  | 0d |  | 李浩 | 64h |  |
| 48 | 3.1.2.1 | 二级AC首次连接清空配置 |  | 3d | 2019-09-19 | 2019-09-24 | 46 |  |  | 0d |  |  |  |  |
| 49 | 3.1.2.2 | 二级AC接收整体配置并解析生效 |  | 5d? | 2019-09-24 | 2019-09-30 | 48 |  |  | 0d |  |  |  |  |
| 50 | 3.1.3 | **二级AC接口调整** |  | 15d | 2019-09-09 | 2019-09-30 |  |  |  | 0d |  | 刘星 | 120h |  |
| 51 | 3.1.3.1 | 公共接口实现 |  | 10d | 2019-09-09 | 2019-09-24 |  |  |  | 0d | start no earlier than 2019-09-09 |  |  |  |
| 52 | 3.1.3.2 | 二级AC专有通信接口 |  | 5d | 2019-09-24 | 2019-09-30 | 51 |  |  | 0d |  |  |  |  |
| 53 | 3.2 | **二级AC自测** |  | 5d | 2019-09-30 | 2019-10-12 | 42 |  |  |  |  |  | 80h |  |
| 54 | 3.2.1 | 二级AC注册公有云自测 |  | 3d | 2019-09-30 | 2019-10-10 | 49 |  |  | 0d |  | 李浩 | 24h |  |
| 55 | 3.2.2 | 二级AC上线配置下发自测 |  | 2d | 2019-10-10 | 2019-10-12 | 54 |  |  | 0d |  | 李浩 | 16h |  |
| 56 | 3.2.3 | 二级AC接口自测 |  | 5d | 2019-09-30 | 2019-10-12 | 52 |  |  | 0d |  | 刘星 | 40h |  |

| ID | WBS | Task | Type | Duration | Start | Finish | Total slack | Resources | Work |
| --- | --- | --- | --- | --- | --- | --- | --- | --- | --- |
| 57 | 4 | **DCME** |  | 57d | 2019-08-05 | 2019-10-28 | 0d |  | 581.6h |
| 58 | 4.1 | **开发** |  | 48d | 2019-08-05 | 2019-10-15 | 0d |  | 488h |
| 59 | 4.1.1 | mqtt、json、xml、设备配置、信息熟悉等先期工作 | manual | 23d | 2019-08-05 | 2019-09-04 |  | 周凡 | 184h |
| 60 | 4.1.2 | 代码基础结构，包含多线程、mqtt数据发送接收等 | manual | 6d | 2019-09-05 | 2019-09-12 |  | 张璧 | 48h |
| 61 | 4.1.3 | 时钟同步、设备重新发现，定时更新 | manual | 6d | 2019-09-05 | 2019-09-12 |  | 周凡 | 48h |
| 62 | 4.1.4 | 配置文件同步，无线网络配置下发 | manual | 5d | 2019-09-16 | 2019-09-20 |  | 周凡 | 40h |
| 63 | 4.1.5 | 设备发现，心跳，认证 | manual | 7d | 2019-09-16 | 2019-09-24 |  | 张璧 | 56h |
| 64 | 4.1.6 | DCME上线、定时上报、ap定时上报、shell命令执行等 | manual | 7d | 2019-09-23 | 2019-09-30 |  | 周凡 | 56h |
| 65 | 4.1.7 | 自测所有功能点 | manual | 7d | 2019-10-08 | 2019-10-15 |  | 周凡 | 56h |
| 66 | 4.2 | **联调** |  | 9d | 2019-10-16 | 2019-10-28 | 0d |  | 93.6h |
| 67 | 4.2.1 | 设备发现和上线 | manual | 2d | 2019-10-16 | 2019-10-17 |  | 周凡 | 16h |
| 68 | 4.2.2 | 上报和配置下发 | manual | 4d | 2019-10-18 | 2019-10-23 |  | 周凡 | 32h |
| 69 | 4.2.3 | portal联调 | manual | 3d | 2019-10-24 | 2019-10-28 |  | 周凡 | 24h |
| 70 | 4.2.4 | 张璧协同配合周凡 | manual | 9d | 2019-10-16 | 2019-10-28 |  | 张璧 [30%] | 21.6h |
| 71 | 5 | **集成联调** |  | 11d | 2019-10-14 | 2019-10-28 |  |  | 364h |
| 72 | 5.1 | **二级AC联调** |  | 10d | 2019-10-15 | 2019-10-28 | 0d |  | 296h |
| 73 | 5.1.1 | 设备发现和上线联调 | manual | 2d | 2019-10-15 | 2019-10-16 |  | 席晔文 [50%]; 李文静; 李浩 | 40h |
| 74 | 5.1.2 | 设备信息上报和配置下发联调 | manual | 3d | 2019-10-17 | 2019-10-21 |  | 李文静; 席晔文 [50%]; 李浩 | 60h |
| 75 | 5.1.3 | 无线网络配置下发联调 | manual | 2d | 2019-10-22 | 2019-10-23 |  | 李浩; 李文静; 席晔文 [50%] | 40h |
| 76 | 5.1.4 | 认证策略下发联调 | manual | 3d | 2019-10-24 | 2019-10-28 |  | 李浩; 李文静; 席晔文 [50%] | 60h |
| 77 | 5.1.5 | Portal联调 | manual | 6d | 2019-10-15 | 2019-10-22 |  | 李斌; 刘星 | 96h |
| 78 | 5.2 | **DCME联调** |  | 9d | 2019-10-16 | 2019-10-28 | 0d |  | 68h |
| 79 | 5.2.1 | 设备发现和上线 | manual | 2d | 2019-10-16 | 2019-10-17 |  | 席晔文 [50%] | 8h |
| 80 | 5.2.2 | 上报和配置下发 | manual | 7d | 2019-10-18 | 2019-10-28 |  | 席晔文 [50%] | 28h |
| 81 | 5.2.3 | Portal联调 | manual | 4d | 2019-10-23 | 2019-10-28 |  | 李斌 | 32h |

| ID | WBS | Task | Type | Duration | Start | Finish | Predecessors | Total slack | Resources | Work | 输出物 |
| --- | --- | --- | --- | --- | --- | --- | --- | --- | --- | --- | --- |
| 82 | 6 | **集成自测** |  | 9d | 2019-10-29 | 2019-11-08 | 71 |  |  | 468h |  |
| 83 | 6.1 | **自模块测试** |  | 5d | 2019-10-29 | 2019-11-04 |  | 0d |  | 276h |  |
| 84 | 6.1.1 | 日志管理和网络概述 | manual | 5d | 2019-10-29 | 2019-11-04 |  |  | 孙杨寸 [50%]; 李文静 [50%] | 40h |  |
| 85 | 6.1.2 | 设备管理 | manual | 5d | 2019-10-29 | 2019-11-04 |  |  | 习云芳; 钟波 [50%]; 席晔文 [30%] | 72h |  |
| 86 | 6.1.3 | Portal认证 | manual | 5d | 2019-10-29 | 2019-11-04 |  |  | 李斌; 顾勇 | 80h |  |
| 87 | 6.1.4 | 认证策略配置 | manual | 5d | 2019-10-29 | 2019-11-04 |  |  | 李文静 [50%]; 席晔文 [30%]; 钟波 [50%] | 52h |  |
| 88 | 6.1.5 | 无线网络配置 | manual | 5d | 2019-10-29 | 2019-11-04 |  |  | 席晔文 [30%]; 孙杨寸 [50%] | 32h |  |
| 89 | 6.2 | **交叉测试** |  | 4d | 2019-11-05 | 2019-11-08 |  | 0d |  | 192h |  |
| 90 | 6.2.1 | 日志管理和网络概述 | manual | 4d | 2019-11-05 | 2019-11-08 |  |  | 李文静 [50%]; 钟波 [50%] | 32h |  |
| 91 | 6.2.2 | 设备管理 | manual | 4d | 2019-11-05 | 2019-11-08 |  |  | 习云芳 [50%]; 席晔文 [50%] | 32h |  |
| 92 | 6.2.3 | Portal认证 | manual | 4d | 2019-11-05 | 2019-11-08 |  |  | 李斌; 顾勇 | 64h |  |
| 93 | 6.2.4 | 认证策略配置 | manual | 4d | 2019-11-05 | 2019-11-08 |  |  | 孙杨寸 [50%]; 习云芳 [50%] | 32h |  |
| 94 | 6.2.5 | 无线网络配置 | manual | 4d | 2019-11-05 | 2019-11-08 |  |  | 李文静 [50%]; 钟波 [50%] | 32h |  |
| 95 | 7 | 发布测试版本（tr4） | manual | 1d? | 2019-11-11 | 2019-11-11 | 82 |  |  |  |  |
| 96 | 8 | **功能测试** |  | 15d | 2019-11-11 | 2019-11-29 |  |  |  | 120h |  |
| 97 | 8.1 | 设备管理 | manual | 3d | 2019-11-11 | 2019-11-13 |  |  | 邓皓 | 24h |  |
| 98 | 8.2 | 无线网络配置 | manual | 2d | 2019-11-14 | 2019-11-15 | 97 |  | 邓皓 | 16h |  |
| 99 | 8.3 | 认证策略配置 | manual | 2d | 2019-11-18 | 2019-11-19 | 98 |  | 邓皓 | 16h |  |
| 100 | 8.4 | Portal认证 | manual | 6d | 2019-11-20 | 2019-11-27 | 99 |  | 邓皓 | 48h |  |
| 101 | 8.5 | 状态与监控 | manual | 2d | 2019-11-28 | 2019-11-29 | 100 |  | 邓皓 | 16h | 第一轮功能测试报告 |
| 102 | 9 | **集成测试** |  | 16d | 2019-12-02 | 2019-12-23 |  | 0d |  | 80h |  |
| 103 | 9.1 | 第一轮集成测试 | manual | 5d | 2019-12-02 | 2019-12-06 |  |  | 邓皓 | 40h | 第一轮集成测试报告 |
| 104 | 9.2 | 第二轮集成测试 | manual | 5d | 2019-12-17 | 2019-12-23 | 105 |  | 邓皓 | 40h | 第二轮集成测试报告 |
| 105 | 10 | 性能测试 | manual | 6d | 2019-12-09 | 2019-12-16 | 103 |  | 邓皓 | 48h | 性能测试报告 |
| 106 | 11 | 确认测试 | manual | 3d | 2019-12-24 | 2019-12-26 | 104 |  | 邓皓 | 24h | 确认测试报告 |
| 107 | 12 | 产品发布 | manual | 1d | 2019-12-27 | 2019-12-27 | 106 |  | 邓皓 | 8h |  |
